Schedule from OmniPlan, 2013-01-07 to 2014-11-29.
Project start 2012-12-09

## Resources

| Resource | Group |
| --- | --- |
| Resource 1 | staff |
| Equipment 1 | equipment |
| Material 1 | material |
| Group 1 | group |
| Resource 1 | staff |

## Schedule

| ID | WBS | Task | Type | Start | Predecessors | Constraint | Work |
| --- | --- | --- | --- | --- | --- | --- | --- |
| 1 | 1 | **SVT** |  | 2013-01-07 |  | start no earlier than 2013-01-07 |  |
| 2 | 1.1 | **Milestones** |  | 2013-02-01 |  |  |  |
| 3 | 1.1.1 | SVT returns from JLab | milestone | 2013-02-01 |  | start no earlier than 2013-02-01 |  |
| 4 | 1.1.2 | Project funded | milestone | 2013-10-01 |  | start no earlier than 2013-10-01 |  |
| 5 | 1.2 | **Layers 1-3** |  | 2013-01-07 |  |  |  |
| 6 | 1.2.1 | **Modules** |  | 2013-01-07 |  |  |  |
| 7 | 1.2.1.1 | **Half modules** |  | 2014-05-05 |  |  |  |
| 8 | 1.2.1.1.1 | Disassembly |  | 2014-05-05 | 3 | start no earlier than 2014-05-05 | 40.71h |
| 9 | 1.2.1.1.2 | Testing |  | 2014-05-12 | 8 |  | 80h |
| 10 | 1.2.1.1.3 | QA and selection |  | 2014-05-26 | 9 | start no earlier than 2014-04-15 | 40h |
| 11 | 1.2.1.1.4 | Layers 1-3 Half Modules Complete | milestone | 2014-06-02 | 10 |  |  |
| 12 | 1.2.1.2 | **Module supports** |  | 2013-01-07 |  |  |  |
| 13 | 1.2.1.2.1 | Prototyping |  | 2013-01-07 |  |  | 480h |
| 14 | 1.2.1.2.2 | Design |  | 2014-04-14 | 13 | start no earlier than 2014-04-14 | 40h |
| 15 | 1.2.1.2.3 | Procurement |  | 2014-04-21 | 4, 14 | start no earlier than 2014-04-21 | 40h |
| 16 | 1.2.1.2.4 | Fabrication |  | 2014-04-28 | 15 |  | 80h |
| 17 | 1.2.1.2.5 | Assembly |  | 2014-05-12 | 16 |  | 40h |
| 18 | 1.2.1.3 | **Integration** |  | 2014-03-24 |  |  |  |
| 19 | 1.2.1.3.1 | **Design** |  | 2014-03-24 |  |  |  |
| 20 | 1.2.1.3.1.1 | Module |  | 2014-03-24 | 14FF |  | 160h |
| 21 | 1.2.1.3.1.2 | Assembly fixture |  | 2014-04-21 | 14 |  | 80h |
| 22 | 1.2.1.3.2 | **Procurement** |  | 2014-05-05 | 4 |  |  |
| 23 | 1.2.1.3.2.1 | Module assembly fixture |  | 2014-05-05 | 21 |  | 40h |
| 24 | 1.2.1.3.3 | **Fabrication** |  | 2014-05-12 |  |  |  |
| 25 | 1.2.1.3.3.1 | Module assembly fixture |  | 2014-05-12 | 23 |  | 80h |

| ID | WBS | Task | Type | Start | Predecessors | Work |
| --- | --- | --- | --- | --- | --- | --- |
| 26 | 1.2.1.3.4 | **Assembly** |  | 2014-06-02 | 12, 11 |  |
| 27 | 1.2.1.3.4.1 | Half module preparation |  | 2014-06-02 |  | 40h |
| 28 | 1.2.1.3.4.2 | Module assembly |  | 2014-06-09 | 27 | 80h |
| 29 | 1.2.1.3.5 | **Testing** |  | 2014-06-23 |  |  |
| 30 | 1.2.1.3.5.1 | DAQ testing |  | 2014-06-23 | 28 | 80h |
| 31 | 1.2.1.3.5.2 | Survey |  | 2014-06-23 | 30FF | 80h |
| 32 | 1.2.1.4 | Layers 1-3 modules complete | milestone | 2014-07-07 | 29 |  |
| 33 | 1.2.2 | **Support channels** |  | 2014-04-21 |  |  |
| 34 | 1.2.2.1 | **Design** |  | 2014-04-21 |  |  |
| 35 | 1.2.2.1.1 | Support channel |  | 2014-04-21 | 20 | 80h |
| 36 | 1.2.2.2 | **Procurement** |  | 2014-05-05 | 34, 4 |  |
| 37 | 1.2.2.2.1 | Support channel |  | 2014-05-05 |  | 160h |
| 38 | 1.2.2.3 | **Fabrication** |  | 2014-06-02 | 36 |  |
| 39 | 1.2.2.3.1 | Small parts |  | 2014-06-02 |  | 80h |
| 40 | 1.2.2.4 | **Assembly** |  | 2014-07-07 | 32, 38 |  |
| 41 | 1.2.2.4.1 | Module mounting |  | 2014-07-07 |  | 80h |
| 42 | 1.2.2.5 | **Testing** |  | 2014-07-07 | 40SS |  |
| 43 | 1.2.2.5.1 | DAQ testing |  | 2014-07-07 |  | 160h |
| 44 | 1.2.2.5.2 | Survey |  | 2014-07-07 |  | 80h |
| 45 | 1.2.2.6 | Layers 1-3 complete | milestone | 2014-08-04 | 42 |  |
| 46 | 1.3 | **Layers 4-6** |  | 2013-01-07 |  |  |
| 47 | 1.3.1 | **Modules** |  | 2013-01-07 |  |  |
| 48 | 1.3.1.1 | **Half Modules** |  | 2013-01-07 |  |  |
| 49 | 1.3.1.1.1 | **Supports** |  | 2013-01-07 |  |  |
| 50 | 1.3.1.1.1.1 | **Design** |  | 2013-01-07 |  |  |
| 51 | 1.3.1.1.1.1.1 | Carbon Fiber |  | 2013-01-07 |  | 160h |
| 52 | 1.3.1.1.1.1.2 | Kapton |  | 2013-01-07 | 51FF | 160h |

| ID | WBS | Task | Start | Predecessors | Work |
| --- | --- | --- | --- | --- | --- |
| 53 | 1.3.1.1.1.2 | **Procurement** | 2013-10-01 | 4, 50 |  |
| 54 | 1.3.1.1.1.2.1 | Carbon fiber | 2013-10-01 |  | 160h |
| 55 | 1.3.1.1.1.2.2 | Kapton | 2013-10-01 | 54FF | 160h |
| 56 | 1.3.1.1.1.3 | Fabrication | 2013-10-29 | 53 | 80h |
| 57 | 1.3.1.1.1.4 | Assembly | 2013-11-12 | 56 | 160h |
| 58 | 1.3.1.1.1.5 | Testing | 2013-12-10 | 57 | 40h |
| 59 | 1.3.1.1.2 | **Sensors** | 2013-01-07 |  |  |
| 60 | 1.3.1.1.2.1 | Procurement | 2013-01-07 |  | 160h |
| 61 | 1.3.1.1.2.2 | Testing | 2013-02-04 | 60 | 80h |
| 62 | 1.3.1.1.3 | **Integration** | 2013-01-07 |  |  |
| 63 | 1.3.1.1.3.1 | **Design** | 2013-01-07 |  |  |
| 64 | 1.3.1.1.3.1.1 | Half-module design | 2013-01-07 | 52FF | 320h |
| 65 | 1.3.1.1.3.1.2 | Support assembly fixture | 2013-03-04 | 64 | 80h |
| 66 | 1.3.1.1.3.1.3 | Half-module assembly fixture | 2013-03-04 | 64 | 160h |
| 67 | 1.3.1.1.3.1.4 | Wirebonding fixture | 2013-03-04 | 64 | 160h |
| 68 | 1.3.1.1.3.2 | **Procurement** | 2013-03-18 |  |  |
| 69 | 1.3.1.1.3.2.1 | Support assembly fixture | 2013-03-18 | 65 | 160h |
| 70 | 1.3.1.1.3.2.2 | Half-module assembly fixture | 2013-04-01 | 66 | 160h |
| 71 | 1.3.1.1.3.2.3 | Wirebonding fixture | 2013-04-01 | 67 | 160h |
| 72 | 1.3.1.1.3.3 | **Fabrication** | 2013-04-29 |  |  |
| 73 | 1.3.1.1.3.3.1 | Small parts | 2013-04-29 | 68 | 80h |
| 74 | 1.3.1.1.3.4 | **Assembly** | 2013-10-01 | 4 |  |
| 75 | 1.3.1.1.3.4.1 | half-module assembly | 2013-10-01 | 72 | 160h |
| 76 | 1.3.1.1.3.4.2 | wirebonding | 2013-10-01 | 75SS | 160h |

| ID | WBS | Task | Type | Start | Predecessors | Work |
| --- | --- | --- | --- | --- | --- | --- |
| 77 | 1.3.1.1.3.5 | **Testing** |  | 2013-10-01 |  |  |
| 78 | 1.3.1.1.3.5.1 | DAQ testing |  | 2013-10-01 | 76SS | 160h |
| 79 | 1.3.1.1.3.6 | Layers 4-6 Half Modules Complete | milestone | 2013-10-29 | 77 |  |
| 80 | 1.3.1.2 | **Module supports** |  | 2014-04-21 |  |  |
| 81 | 1.3.1.2.1 | Design |  | 2014-04-21 | 14 | 40h |
| 82 | 1.3.1.2.2 | Procurement |  | 2014-04-28 | 4, 81 | 40h |
| 83 | 1.3.1.2.3 | Fabrication |  | 2014-05-05 | 82 | 80h |
| 84 | 1.3.1.2.4 | Assembly |  | 2014-05-19 | 83 | 40h |
| 85 | 1.3.1.2.5 | Testing |  | 2014-05-26 | 84 | 40h |
| 86 | 1.3.1.3 | **Integration** |  | 2014-03-31 |  |  |
| 87 | 1.3.1.3.1 | **Design** |  | 2014-03-31 |  |  |
| 88 | 1.3.1.3.1.1 | Module |  | 2014-03-31 | 81FF, 64FF | 160h |
| 89 | 1.3.1.3.1.2 | Module assembly fixture |  | 2014-04-28 | 88 | 80h |
| 90 | 1.3.1.3.2 | **Procurement** |  | 2014-05-12 | 4 |  |
| 91 | 1.3.1.3.2.1 | Module assembly fixture |  | 2014-05-12 | 89 | 40h |
| 92 | 1.3.1.3.3 | **Fabrication** |  | 2014-05-19 |  |  |
| 93 | 1.3.1.3.3.1 | Module assembly fixture |  | 2014-05-19 | 91 | 80h |
| 94 | 1.3.1.3.4 | **Assembly** |  | 2014-06-02 |  |  |
| 95 | 1.3.1.3.4.1 | Modules |  | 2014-06-02 | 79, 93 | 40h |
| 96 | 1.3.1.3.5 | **Testing** |  | 2014-06-02 | 94SS |  |
| 97 | 1.3.1.3.5.1 | DAQ testing |  | 2014-06-02 |  | 80h |
| 98 | 1.3.1.3.5.2 | Survey |  | 2014-06-16 | 97 | 80h |
| 99 | 1.3.1.4 | Layers 4-6 Modules Complete | milestone | 2014-06-28 | 98 |  |
| 100 | 1.3.2 | **Support channels** |  | 2014-04-28 | 33SS |  |
| 101 | 1.3.2.1 | **Design** |  | 2014-04-28 |  |  |
| 102 | 1.3.2.1.1 | Support channel |  | 2014-04-28 | 88 | 80h |

| ID | WBS | Task | Type | Start | Predecessors | Work |
| --- | --- | --- | --- | --- | --- | --- |
| 103 | 1.3.2.2 | **Procurement** |  | 2014-05-12 | 101, 4 |  |
| 104 | 1.3.2.2.1 | Support channel |  | 2014-05-12 |  | 160h |
| 105 | 1.3.2.3 | **Fabrication** |  | 2014-06-09 | 103 |  |
| 106 | 1.3.2.3.1 | Small parts |  | 2014-06-09 |  | 80h |
| 107 | 1.3.2.4 | **Assembly** |  | 2014-06-30 | 105 |  |
| 108 | 1.3.2.4.1 | Module mounting |  | 2014-06-30 | 99 | 80h |
| 109 | 1.3.2.5 | **Testing** |  | 2014-07-14 | 107 |  |
| 110 | 1.3.2.5.1 | DAQ testing |  | 2014-07-14 |  | 80h |
| 111 | 1.3.2.5.2 | Survey |  | 2014-07-14 |  | 80h |
| 112 | 1.3.2.6 | Layers 4-6 complete | milestone | 2014-07-26 | 109 |  |
| 113 | 1.4 | **Tracker support structures** |  | 2014-05-12 | 4 |  |
| 114 | 1.4.1 | **Support Box** |  | 2014-05-12 |  |  |
| 115 | 1.4.1.1 | Design |  | 2014-05-12 | 102, 35 | 80h |
| 116 | 1.4.1.2 | Procurement |  | 2014-05-26 | 115 | 40h |
| 117 | 1.4.1.3 | Fabrication |  | 2014-06-02 | 116 | 160h |
| 118 | 1.4.2 | **Support ring** |  | 2014-05-12 |  |  |
| 119 | 1.4.2.1 | Design |  | 2014-05-12 | 102, 35 | 80h |
| 120 | 1.4.2.2 | Procurement |  | 2014-05-26 | 4, 119 | 40h |
| 121 | 1.4.2.3 | Fabrication |  | 2014-06-02 | 120 | 160h |
| 122 | 1.4.3 | **DAQ Support/Cooling** |  | 2014-05-12 |  |  |
| 123 | 1.4.3.1 | Design |  | 2014-05-12 | 102, 35 | 80h |
| 124 | 1.4.3.2 | Procurement |  | 2014-05-26 | 4, 123 | 40h |
| 125 | 1.4.3.3 | Fabrication |  | 2014-06-02 | 124 | 160h |
| 126 | 1.4.4 | Assembly |  | 2014-06-30 | 117, 121, 125 | 80h |
| 127 | 1.4.5 | Testing |  | 2014-07-14 | 126 | 80h |
| 128 | 1.4.6 | Tracker Support Complete | milestone | 2014-07-26 | 127 |  |

| ID | WBS | Task | Type | Start | Predecessors | Constraint | Work |
| --- | --- | --- | --- | --- | --- | --- | --- |
| 129 | 1.5 | **Services** |  | 2013-10-01 | 4 |  |  |
| 130 | 1.5.1 | **Vacuum Flanges/Boards/cables** |  | 2013-10-01 |  |  |  |
| 131 | 1.5.1.1 | Design |  | 2013-10-01 |  |  | 480h |
| 132 | 1.5.1.2 | Procurement |  | 2013-12-24 | 4, 131 |  | 480h |
| 133 | 1.5.1.3 | Fabrication |  | 2014-03-18 | 132 |  | 80h |
| 134 | 1.5.1.4 | **Assembly** |  | 2014-07-25 | 133 |  |  |
| 135 | 1.5.1.4.1 | Flange board assembly |  | 2014-07-25 | 185 |  | 40h |
| 136 | 1.5.1.4.2 | Power flange board assembly |  | 2014-07-28 | 197 |  | 40h |
| 137 | 1.5.1.5 | Testing |  | 2014-08-04 | 135, 136 |  | 80h |
| 138 | 1.5.2 | **Shipping** |  | 2014-07-18 |  |  |  |
| 139 | 1.5.2.1 | Design |  | 2014-07-18 | 102, 35 | start no earlier than 2014-07-18 | 80h |
| 140 | 1.5.2.2 | Procurement |  | 2014-08-01 | 139 |  | 160h |
| 141 | 1.5.2.3 | Fabrication |  | 2014-08-29 | 140 |  | 80h |
| 142 | 1.5.2.4 | Assembly |  | 2014-09-12 | 141 |  | 40h |
| 143 | 1.5.2.5 | Testing |  | 2014-09-19 | 142 |  | 40h |
| 144 | 1.5.3 | Services complete | milestone | 2014-09-26 | 137, 143 |  |  |
| 145 | 1.6 | **Integration at SLAC** |  | 2014-09-01 |  |  |  |
| 146 | 1.6.1 | Assembly |  | 2014-09-01 | 173, 112, 45, 137, 128 |  | 80h |
| 147 | 1.6.2 | Testing |  | 2014-09-15 | 146 |  | 160h |
| 148 | 1.6.3 | SVT ready to ship | milestone | 2014-10-11 | 278, 144, 147 |  |  |
| 149 | 1.7 | **Integration at JLab** |  | 2014-10-13 | 148 |  |  |
| 150 | 1.7.1 | Assembly |  | 2014-10-13 |  |  | 80h |
| 151 | 1.7.2 | Testing |  | 2014-10-27 | 150 |  | 160h |
| 152 | 1.7.3 | Installation |  | 2014-11-24 | 151 |  | 40h |
| 153 | 1.7.4 | SVT project complete | milestone | 2014-11-29 | 152 |  |  |

| ID | WBS | Task | Type | Start | Predecessors | Constraint | Work |
| --- | --- | --- | --- | --- | --- | --- | --- |
| 154 | 2 | **SVT DAQ** |  | 2013-08-05 |  |  |  |
| 155 | 2.1 | **Hybrids** |  | 2013-08-05 |  |  |  |
| 156 | 2.1.1 | Design |  | 2013-08-05 |  | start no earlier than 2013-08-05 | 320h |
| 157 | 2.1.2 | Procurement |  | 2013-09-30 | 156 |  | 80h |
| 158 | 2.1.3 | Fabrication |  | 2013-10-14 | 157 |  | 80h |
| 159 | 2.1.4 | Assembly |  | 2013-10-28 | 158 |  | 160h |
| 160 | 2.1.5 | Testing |  | 2013-11-25 | 159 |  | 160h |
| 161 | 2.1.6 | Hybrids Complete | milestone | 2013-12-21 | 160 |  |  |
| 162 | 2.2 | **FE Boards** |  | 2013-12-02 |  | start no earlier than 2013-12-02 |  |
| 163 | 2.2.1 | Design |  | 2013-12-02 |  |  | 240h |
| 164 | 2.2.2 | Procurement |  | 2014-01-24 | 163 | start no earlier than 2014-01-24 | 40h |
| 165 | 2.2.3 | Assembly |  | 2014-01-31 | 164 |  | 40h |
| 166 | 2.2.4 | Firmware |  | 2013-12-27 |  | start no earlier than 2013-12-27 | 160h |
| 167 | 2.2.5 | Testing |  | 2014-02-07 | 165, 178SS, 166 |  | 968h |
| 168 | 2.2.6 | FE Board Functionality Complete | milestone | 2014-07-26 | 167 |  |  |
| 169 | 2.2.7 | Layout 2nd spin |  | 2014-07-28 | 168 |  | 40h |
| 170 | 2.2.8 | Procurement 2nd spin |  | 2014-08-04 | 169 |  | 40h |
| 171 | 2.2.9 | Assembly |  | 2014-08-11 | 170 |  | 80h |
| 172 | 2.2.10 | Production Testing |  | 2014-08-25 | 171 |  | 40h |
| 173 | 2.2.11 | FE Boards Complete | milestone | 2014-08-30 | 172 |  |  |
| 174 | 2.3 | **Flange Boards** |  | 2013-11-25 |  | start no earlier than 2013-11-25 |  |
| 175 | 2.3.1 | Design |  | 2013-11-25 |  |  | 80h |
| 176 | 2.3.2 | Procurement |  | 2014-01-14 | 175 | start no earlier than 2014-01-14 | 40h |
| 177 | 2.3.3 | Assembly |  | 2014-01-21 | 176 |  | 40h |
| 178 | 2.3.4 | Testing |  | 2014-01-28 | 177 |  | 851h |
| 179 | 2.3.5 | Flange Boards Functionality Complete | milestone | 2014-06-25 | 178 | start no earlier than 2014-06-16 |  |
| 180 | 2.3.6 | 2nd spin design |  | 2014-06-25 | 179 |  | 8h |
| 181 | 2.3.7 | 2nd spin layout |  | 2014-06-26 | 180 |  | 8h |
| 182 | 2.3.8 | Procurement Production |  | 2014-06-27 | 181 |  | 80h |
| 183 | 2.3.9 | Assembly |  | 2014-07-11 | 182 |  | 40h |
| 184 | 2.3.10 | Production Testing |  | 2014-07-18 | 183 |  | 40h |
| 185 | 2.3.11 | Flange Boards Complete | milestone | 2014-07-25 | 184 |  |  |

| ID | WBS | Task | Type | Start | Predecessors | Constraint | Work |
| --- | --- | --- | --- | --- | --- | --- | --- |
| 186 | 2.4 | **Power Flange Boards** |  | 2014-03-10 |  |  |  |
| 187 | 2.4.1 | Design |  | 2014-03-10 |  | start no earlier than 2014-03-09 | 80h |
| 188 | 2.4.2 | Schematic |  | 2014-03-24 | 187 |  | 16h |
| 189 | 2.4.3 | Layout |  | 2014-03-26 | 188 |  | 370.5h |
| 190 | 2.4.4 | Procurement |  | 2014-05-29 | 189 | start no earlier than 2014-01-14 | 40h |
| 191 | 2.4.5 | Assembly |  | 2014-06-05 | 190 |  | 120h |
| 192 | 2.4.6 | Testing |  | 2014-06-26 | 191 |  | 16h |
| 193 | 2.4.7 | 2nd spin design |  | 2014-06-30 | 192 |  | 16h |
| 194 | 2.4.8 | 2nd spin layout |  | 2014-07-02 | 193 |  | 24h |
| 195 | 2.4.9 | 2nd spin procurement |  | 2014-07-07 | 194 |  | 40h |
| 196 | 2.4.10 | Assembly |  | 2014-07-14 | 195 |  | 80h |
| 197 | 2.4.11 | Power Flange Boards Complete | milestone | 2014-07-28 | 196 |  |  |
| 198 | 2.5 | **Cables** |  | 2014-02-03 |  | start no earlier than 2014-02-03 |  |
| 199 | 2.5.1 | **L1-L3 Aggregators** |  | 2014-04-18 |  | start no earlier than 2014-04-18 |  |
| 200 | 2.5.1.1 | Design |  | 2014-04-18 |  |  | 80h |
| 201 | 2.5.1.2 | Schematic |  | 2014-05-02 | 200 |  | 8h |
| 202 | 2.5.1.3 | Layout |  | 2014-05-05 | 201 |  | 80h |
| 203 | 2.5.1.4 | Procurement |  | 2014-05-19 | 202 |  | 40h |
| 204 | 2.5.1.5 | Assembly |  | 2014-05-26 | 203 |  | 40h |
| 205 | 2.5.1.6 | Testing |  | 2014-06-02 | 204 |  | 40h |
| 206 | 2.5.2 | **L1-L3 FEB Cables** |  | 2014-04-18 |  | start no earlier than 2014-04-18 |  |
| 207 | 2.5.2.1 | Design |  | 2014-04-18 |  |  | 80h |
| 208 | 2.5.2.2 | Schematic |  | 2014-05-02 | 207 |  | 8h |
| 209 | 2.5.2.3 | Layout |  | 2014-05-05 | 208 |  | 80h |
| 210 | 2.5.2.4 | Procurement |  | 2014-05-19 | 209 |  | 40h |
| 211 | 2.5.2.5 | Assembly |  | 2014-05-26 | 210 |  | 40h |
| 212 | 2.5.2.6 | Testing |  | 2014-06-02 | 211 |  | 40h |

| ID | WBS | Task | Start | Predecessors | Constraint | Work |
| --- | --- | --- | --- | --- | --- | --- |
| 213 | 2.5.3 | **L4-L6 Aggregators** | 2014-04-18 |  | start no earlier than 2014-04-18 |  |
| 214 | 2.5.3.1 | Design | 2014-04-18 |  |  | 80h |
| 215 | 2.5.3.2 | Schematic | 2014-05-02 | 214 |  | 8h |
| 216 | 2.5.3.3 | Layout | 2014-05-05 | 215 |  | 80h |
| 217 | 2.5.3.4 | Procurement | 2014-05-19 | 216 |  | 40h |
| 218 | 2.5.3.5 | Assembly | 2014-05-26 | 217 |  | 40h |
| 219 | 2.5.3.6 | Testing | 2014-06-02 | 218 |  | 40h |
| 220 | 2.5.4 | **L4-L6 FEB Cables** | 2014-04-18 |  | start no earlier than 2014-04-18 |  |
| 221 | 2.5.4.1 | Design | 2014-04-18 |  |  | 80h |
| 222 | 2.5.4.2 | Schematic | 2014-05-02 | 221 |  | 8h |
| 223 | 2.5.4.3 | Layout | 2014-05-05 | 222 |  | 80h |
| 224 | 2.5.4.4 | Procurement | 2014-05-19 | 223 |  | 40h |
| 225 | 2.5.4.5 | Assembly | 2014-05-26 | 224 |  | 40h |
| 226 | 2.5.4.6 | Testing | 2014-06-02 | 225 |  | 40h |
| 227 | 2.5.5 | **FEB HV Cables** | 2014-02-03 |  |  |  |
| 228 | 2.5.5.1 | Design | 2014-02-03 |  |  | 120h |
| 229 | 2.5.5.2 | Procurement | 2014-02-24 | 228 |  | 440h |
| 230 | 2.5.5.3 | Assembly | 2014-05-12 | 229 |  | 80h |
| 231 | 2.5.5.4 | Testing | 2014-05-26 | 230 |  | 48.06h |
| 232 | 2.5.6 | **FEB LV Cables** | 2014-02-03 |  |  |  |
| 233 | 2.5.6.1 | Design | 2014-02-03 |  |  | 120h |
| 234 | 2.5.6.2 | Procurement | 2014-02-24 | 233 |  | 440h |
| 235 | 2.5.6.3 | Assembly | 2014-05-12 | 234 |  | 80h |
| 236 | 2.5.6.4 | Testing | 2014-05-26 | 235 |  | 40h |

| ID | WBS | Task | Type | Start | Predecessors | Constraint | Work |
| --- | --- | --- | --- | --- | --- | --- | --- |
| 237 | 2.5.7 | **FEB Data Cables** |  | 2014-02-03 |  |  |  |
| 238 | 2.5.7.1 | Design |  | 2014-02-03 |  |  | 40h |
| 239 | 2.5.7.2 | Procurement |  | 2014-02-10 | 238 |  | 40h |
| 240 | 2.5.7.3 | Testing |  | 2014-02-17 | 239 |  | 360h |
| 241 | 2.5.7.4 | Production Procurement |  | 2014-05-02 | 240 | start no earlier than 2014-05-02 | 40h |
| 242 | 2.5.7.5 | Production Testing |  | 2014-05-09 | 241 |  | 40h |
| 243 | 2.5.8 | **External PS Cables** |  | 2014-02-03 |  |  |  |
| 244 | 2.5.8.1 | Design |  | 2014-02-03 |  |  | 560h |
| 245 | 2.5.8.2 | Procurement |  | 2014-05-12 | 244 |  | 145.25h |
| 246 | 2.5.8.3 | Assembly |  | 2014-06-05 | 245 |  | 246.5h |
| 247 | 2.5.8.4 | Extra procurement HV wire |  | 2014-07-18 |  | start no earlier than 2014-07-18 | 160h |
| 248 | 2.5.8.5 | Assembly extra HV wire |  | 2014-08-15 | 247 |  | 8h |
| 249 | 2.5.8.6 | Testing |  | 2014-08-18 | 248 |  | 16h |
| 250 | 2.5.9 | **External DAQ Cables** |  | 2014-04-21 |  |  |  |
| 251 | 2.5.9.1 | Design |  | 2014-04-21 |  | start no earlier than 2014-04-21 | 8h |
| 252 | 2.5.9.2 | Procurement |  | 2014-04-22 | 251 |  | 160h |
| 253 | 2.5.9.3 | Assembly |  | 2014-05-20 | 252 |  | 8h |
| 254 | 2.5.9.4 | Testing |  | 2014-05-21 | 253 |  | 8h |
| 255 | 2.5.10 | Cables Complete | milestone | 2014-08-20 | 199, 206, 213, 220, 227, 232, 237, 243, 250, 249, 254 |  |  |
| 256 | 2.6 | **ATCA DAQ** |  | 2014-01-06 |  | start no earlier than 2014-01-06 |  |
| 257 | 2.6.1 | **RCE Nodes** |  | 2014-04-04 |  |  |  |
| 258 | 2.6.1.1 | Procurement |  | 2014-04-04 |  | start no earlier than 2014-04-04 | 160h |
| 259 | 2.6.1.2 | DPM Firmware |  | 2014-06-12 | 258 | start no earlier than 2014-06-12 | 80h |
| 260 | 2.6.1.3 | Software |  | 2014-06-26 | 259 |  | 80h |
| 261 | 2.6.1.4 | DTM Firmware |  | 2014-07-10 | 260 |  | 80h |
| 262 | 2.6.1.5 | ROC Software |  | 2014-07-24 | 261 |  | 80h |
| 263 | 2.6.1.6 | Testing |  | 2014-08-07 | 262 |  | 80h |

| ID | WBS | Task | Type | Start | Predecessors | Constraint | Work |
| --- | --- | --- | --- | --- | --- | --- | --- |
| 264 | 2.6.2 | **Trigger RTM** |  | 2014-01-06 |  |  |  |
| 265 | 2.6.2.1 | Design |  | 2014-01-06 |  |  | 560h |
| 266 | 2.6.2.2 | Procurement |  | 2014-04-14 | 265 |  | 525.5h |
| 267 | 2.6.2.3 | Assembly |  | 2014-07-14 | 266 |  | 40h |
| 268 | 2.6.2.4 | Testing |  | 2014-07-21 | 267, 179 |  | 80h |
| 269 | 2.6.3 | EPICS slow control |  | 2014-06-02 |  | start no earlier than 2014-06-02 | 440h |
| 270 | 2.6.4 | RCE DAQ Complete | milestone | 2014-08-21 | 263, 268, 269 |  |  |
| 271 | 2.7 | **Power Supplies** |  | 2013-11-22 |  | start no earlier than 2013-11-22 |  |
| 272 | 2.7.1 | Procurement |  | 2013-11-22 |  |  | 1385.75h |
| 273 | 2.7.2 | EPICS IOC software |  | 2014-05-05 |  | start no earlier than 2014-05-05 | 120h |
| 274 | 2.7.3 | Testing |  | 2014-07-23 | 272, 273 |  | 80h |
| 275 | 2.8 | **Integration** |  | 2014-09-01 |  |  |  |
| 276 | 2.8.1 | Assembly |  | 2014-09-01 | 173, 274, 246 |  | 40h |
| 277 | 2.8.2 | Testing |  | 2014-09-01 | 173, 270 |  | 200h |
| 278 | 2.9 | SVT DAQ Complete | milestone | 2014-10-04 | 277 |  |  |

Notes:
- 272: Crate&LV modules 6/24, HV modules 5/9.
